# 2017-02-13_Project-Planning_V1

How a schedule from MS Project changed from version to version. A marks actual dates.

## Version 1 (saved 2017-02-20, file 2017-02-16_Project-Planning_V2.mpp)

Note of the change: overzichtelijker gemaakt

| ID | WBS | Task | Duration | Start | Finish | Predecessors | Complete | Total float |
| --- | --- | --- | --- | --- | --- | --- | --- | --- |
| 1 | 1 | **Kerntaak 1** | 7.75d | 2017-02-13 08:20 A | 2017-02-24 11:20 |  | 51% | 13.12d |
| 2 | 1.1 | **WP 1.1** | 2.75d | 2017-02-13 08:20 A | 2017-02-16 11:20 A |  | 100% |  |
| 3 |  | Uitgewerkt interview | 3h | 2017-02-13 08:20 A | 2017-02-13 11:20 A |  | 100% |  |
| 4 |  | Hernieuwde opdracht | 2h | 2017-02-13 11:20 A | 2017-02-15 11:20 A | 3 | 100% |  |
| 5 |  | Offerte | 3h | 2017-02-13 11:20 A | 2017-02-15 10:20 A | 3 | 100% |  |
| 6 |  | Prototype | 5h | 2017-02-15 10:20 A | 2017-02-16 11:20 A | 5 | 100% |  |
| 7 | 1.2 | **WP 1.2** | 0.75d | 2017-02-16 11:20 A | 2017-02-17 10:20 A | 2 | 100% |  |
| 8 |  | Plan van aanpak | 3h | 2017-02-16 11:20 A | 2017-02-17 10:20 A |  | 100% |  |
| 9 |  | Globale Planning | 3h | 2017-02-16 11:20 A | 2017-02-17 10:20 A |  | 100% |  |
| 10 | 1.3 | **WP 1.3** | 1.75d | 2017-02-17 10:20 A | 2017-02-22 09:20 | 7 | 57% | 13.12d |
| 11 |  | Use Case Diagram en Template | 4h | 2017-02-17 10:20 A | 2017-02-20 10:20 A |  | 100% |  |
| 12 |  | Activiteitendiagrammen | 3h | 2017-02-20 10:20 | 2017-02-22 09:20 | 11 |  | 13.12d |
| 13 | 1.4 | **WP 1.4** | 4.25d | 2017-02-17 10:20 | 2017-02-24 11:20 |  |  | 13.12d |
| 14 |  | Modeldictionary | 3h | 2017-02-22 09:20 | 2017-02-22 12:20 | 12 |  | 13.12d |
| 15 |  | Klassendiagram | 3h | 2017-02-23 08:20 | 2017-02-23 11:20 | 14 |  | 13.12d |
| 16 |  | Datadictionary | 2h | 2017-02-17 10:20 | 2017-02-17 12:20 | 8 |  | 14.62d |
| 17 |  | Sequentiediagrammen | 4h | 2017-02-23 11:20 | 2017-02-24 11:20 | 15 |  | 13.12d |
| 18 | 1.5 | **WP 1.5** | 2.25d | 2017-02-20 08:20 A | 2017-02-23 09:20 |  | 11% | 14.62d |
| 19 |  | Taakverdeling Ontwikkelomgeving | 2h | 2017-02-20 08:20 | 2017-02-20 10:20 | 16 |  | 14.62d |
| 20 |  | Materialenlijst: Hard- en software | 1h | 2017-02-20 10:20 A | 2017-02-20 11:20 A | 19 | 100% |  |
| 21 |  | Back-up procedure | 2h | 2017-02-20 11:20 | 2017-02-22 09:20 | 20 |  | 14.62d |
| 22 |  | Verslag over de installatie, configuratie en testen. | 4h | 2017-02-22 09:20 | 2017-02-23 09:20 | 21 |  | 14.62d |
| 23 |  | Kerntaak 1 INLEVEREN | 0d | 2017-02-24 08:20 | 2017-02-24 08:20 |  |  |  |
| 24 | 3 | **Kerntaak 2** | 5.12d | 2017-02-24 11:20 | 2017-03-06 11:50 | 1 |  | 13.12d |
| 25 | 3.1 | **WP 2.1** | 2d | 2017-02-24 11:20 | 2017-03-01 11:20 |  |  | 13.12d |
| 26 |  | Organisatieonderzoek over reeds gebruikte databases | 2h | 2017-02-24 11:20 | 2017-02-27 09:20 |  |  | 13.12d |
| 27 |  | Normalisatie Database en datadictionary bijwerken | 2h | 2017-02-27 09:20 | 2017-02-27 11:20 | 26 |  | 13.12d |
| 28 |  | Database bouwen | 2h | 2017-02-27 11:20 | 2017-03-01 09:20 | 27 |  | 13.12d |
| 29 |  | Procedure databasegegevens | 2h | 2017-03-01 09:20 | 2017-03-01 11:20 | 28 |  | 13.12d |
| 30 | 3.2 | **WP 2.2** | 1.12d | 2017-03-01 11:20 | 2017-03-02 11:50 | 25 |  | 13.12d |
| 31 |  | Taakverdeling realisatie applicatie | 1h | 2017-03-01 11:20 | 2017-03-01 12:20 |  |  | 13.12d |
| 32 |  | Materialen- en middelenlijst voor het applicatie | 2h | 2017-03-02 08:20 | 2017-03-02 10:20 | 31 |  | 13.12d |
| 33 |  | Klassendiagram vanuit Visual Studio | 0.5h | 2017-03-02 10:20 | 2017-03-02 10:50 | 32 |  | 13.12d |
| 34 |  | Werkende solution en gesperkverslag | 1h | 2017-03-02 10:50 | 2017-03-02 11:50 | 33 |  | 13.12d |
| 35 | 3.3 | **WP 2.3** | 2d | 2017-03-02 11:50 | 2017-03-06 11:50 | 30 |  | 13.12d |
| 36 |  | Gedetailleerd testplan | 2h | 2017-03-02 11:50 | 2017-03-03 09:50 |  |  | 13.12d |
| 37 |  | Lijst van test-tools | 1h | 2017-03-03 09:50 | 2017-03-03 10:50 | 36 |  | 13.12d |
| 38 |  | Uitgevoerde test en documentatie van de resultaten (van de test) | 2h | 2017-03-03 10:50 | 2017-03-06 08:50 | 37 |  | 13.12d |
| 39 |  | Aanpassingen aan de applicatie | 3h | 2017-03-06 08:50 | 2017-03-06 11:50 | 38 |  | 13.12d |
| 40 |  | Kerntaak 2 INLEVEREN | 0d | 2017-03-30 08:20 | 2017-03-30 08:20 |  |  |  |
| 41 | 5 | **Kerntaak 3** | 5d | 2017-03-06 11:50 | 2017-03-15 11:50 | 24 |  | 13.12d |
| 42 | 5.1 | **WP 3.1** | 0.5d | 2017-03-06 11:50 | 2017-03-08 09:50 |  |  | 13.12d |
| 43 |  | Implementatieplan | 2h | 2017-03-06 11:50 | 2017-03-08 09:50 |  |  | 13.12d |
| 44 | 5.2 | **WP 3.2** | 3.5d | 2017-03-08 09:50 | 2017-03-13 11:50 | 42 |  | 13.12d |
| 45 |  | Acceptatietest maken | 1h | 2017-03-08 09:50 | 2017-03-08 10:50 |  |  | 13.12d |
| 46 |  | Acceptatietest ondertekend en uitgevoerd | 2h | 2017-03-08 10:50 | 2017-03-13 09:50 | 45 |  | 13.12d |
| 47 |  | Verslag van de resultaten | 2h | 2017-03-13 09:50 | 2017-03-13 11:50 | 46 |  | 13.12d |
| 48 | 5.3 | **WP 3.3** | 0.5d | 2017-03-13 11:50 | 2017-03-15 09:50 | 44 |  | 13.12d |
| 49 |  | Documentatie van het implermenteren | 2h | 2017-03-13 11:50 | 2017-03-15 09:50 |  |  | 13.12d |
| 50 | 5.4 | **WP 3.4** | 0.5d | 2017-03-15 09:50 | 2017-03-15 11:50 | 48 |  | 13.12d |
| 51 |  | Evaluatierapport | 2h | 2017-03-15 09:50 | 2017-03-15 11:50 |  |  | 13.12d |
| 52 |  | Kerntaak 3 INLEVEREN | 0d | 2017-04-07 08:20 | 2017-04-07 08:20 |  |  |  |

## Version 2 (saved 2017-02-22, file 2017-02-22_Project-Planning_V1.mpp)

Note of the change: ALLES GEUPDATE!

Last finish stays 2017-04-07. Complete tasks 8 → 4.

Changed:

| ID | Task | Start | Finish | Complete | Total float |
| --- | --- | --- | --- | --- | --- |
| 1 | **Kerntaak 1** |  |  | 51% → 45% | 13.12d → 9.12d |
| 2 | **WP 1.1** |  | 2017-02-16 11:20 A → 2017-02-16 11:20 | 100% → 85% | none → 0d |
| 4 | Hernieuwde opdracht |  | 2017-02-15 11:20 A → 2017-02-15 09:20 | 100% → 50% | none → 1.5d |
| 6 | Prototype |  | 2017-02-16 11:20 A → 2017-02-16 11:20 | 100% → 80% | none → 0d |
| 7 | **WP 1.2** |  | 2017-02-17 10:20 A → 2017-02-17 10:20 | 100% → 55% | none → 0d |
| 8 | Plan van aanpak |  | 2017-02-17 10:20 A → 2017-02-17 10:20 | 100% → 10% | none → 0d |
| 10 | **WP 1.3** |  |  | 57% → 75% | 13.12d → 0.15d |
| 11 | Use Case Diagram en Template |  | 2017-02-20 10:20 A → 2017-02-20 10:20 | 100% → 75% | none → 0.56d |
| 12 | Activiteitendiagrammen | 2017-02-20 10:20 A |  | 0% → 75% | 13.12d → 0.15d |
| 13 | **WP 1.4** | 2017-02-17 10:20 A |  | 0% → 5% | 13.12d → 9.12d |
| 14 | Modeldictionary | 2017-02-22 09:20 A |  | 0% → 20% | 13.12d → 9.12d |
| 24 | **Kerntaak 2** |  | 2017-03-06 11:50 → 2017-03-13 11:50 (+7d) |  | 13.12d → 9.12d |
| 25 | **WP 2.1** |  | 2017-03-01 11:20 → 2017-03-08 11:20 (+7d) |  | 13.12d → 9.12d |
| 26 | Organisatieonderzoek over reeds gebruikte databases |  | 2017-02-27 09:20 → 2017-03-06 09:20 (+7d) |  | 13.12d → 9.12d |
| 27 | Normalisatie Database en datadictionary bijwerken | 2017-02-27 09:20 → 2017-03-06 09:20 (+7d) | 2017-02-27 11:20 → 2017-03-06 11:20 (+7d) |  | 13.12d → 9.12d |
| 28 | Database bouwen | 2017-02-27 11:20 → 2017-03-06 11:20 (+7d) | 2017-03-01 09:20 → 2017-03-08 09:20 (+7d) |  | 13.12d → 9.12d |
| 29 | Procedure databasegegevens | 2017-03-01 09:20 → 2017-03-08 09:20 (+7d) | 2017-03-01 11:20 → 2017-03-08 11:20 (+7d) |  | 13.12d → 9.12d |
| 30 | **WP 2.2** | 2017-03-01 11:20 → 2017-03-08 11:20 (+7d) | 2017-03-02 11:50 → 2017-03-09 11:50 (+7d) |  | 13.12d → 9.12d |
| 31 | Taakverdeling realisatie applicatie | 2017-03-01 11:20 → 2017-03-08 11:20 (+7d) | 2017-03-01 12:20 → 2017-03-08 12:20 (+7d) |  | 13.12d → 9.12d |
| 32 | Materialen- en middelenlijst voor het applicatie | 2017-03-02 08:20 → 2017-03-09 08:20 (+7d) | 2017-03-02 10:20 → 2017-03-09 10:20 (+7d) |  | 13.12d → 9.12d |
| 33 | Klassendiagram vanuit Visual Studio | 2017-03-02 10:20 → 2017-03-09 10:20 (+7d) | 2017-03-02 10:50 → 2017-03-09 10:50 (+7d) |  | 13.12d → 9.12d |
| 34 | Werkende solution en gesperkverslag | 2017-03-02 10:50 → 2017-03-09 10:50 (+7d) | 2017-03-02 11:50 → 2017-03-09 11:50 (+7d) |  | 13.12d → 9.12d |
| 35 | **WP 2.3** | 2017-03-02 11:50 → 2017-03-09 11:50 (+7d) | 2017-03-06 11:50 → 2017-03-13 11:50 (+7d) |  | 13.12d → 9.12d |
| 36 | Gedetailleerd testplan | 2017-03-02 11:50 → 2017-03-09 11:50 (+7d) | 2017-03-03 09:50 → 2017-03-10 09:50 (+7d) |  | 13.12d → 9.12d |
| 37 | Lijst van test-tools | 2017-03-03 09:50 → 2017-03-10 09:50 (+7d) | 2017-03-03 10:50 → 2017-03-10 10:50 (+7d) |  | 13.12d → 9.12d |
| 38 | Uitgevoerde test en documentatie van de resultaten (van de test) | 2017-03-03 10:50 → 2017-03-10 10:50 (+7d) | 2017-03-06 08:50 → 2017-03-13 08:50 (+7d) |  | 13.12d → 9.12d |
| 39 | Aanpassingen aan de applicatie | 2017-03-06 08:50 → 2017-03-13 08:50 (+7d) | 2017-03-06 11:50 → 2017-03-13 11:50 (+7d) |  | 13.12d → 9.12d |
| 41 | **Kerntaak 3** | 2017-03-06 11:50 → 2017-03-13 11:50 (+7d) | 2017-03-15 11:50 → 2017-03-22 11:50 (+7d) |  | 13.12d → 9.12d |
| 42 | **WP 3.1** | 2017-03-06 11:50 → 2017-03-13 11:50 (+7d) | 2017-03-08 09:50 → 2017-03-15 09:50 (+7d) |  | 13.12d → 9.12d |
| 43 | Implementatieplan | 2017-03-06 11:50 → 2017-03-13 11:50 (+7d) | 2017-03-08 09:50 → 2017-03-15 09:50 (+7d) |  | 13.12d → 9.12d |
| 44 | **WP 3.2** | 2017-03-08 09:50 → 2017-03-15 09:50 (+7d) | 2017-03-13 11:50 → 2017-03-20 11:50 (+7d) |  | 13.12d → 9.12d |
| 45 | Acceptatietest maken | 2017-03-08 09:50 → 2017-03-15 09:50 (+7d) | 2017-03-08 10:50 → 2017-03-15 10:50 (+7d) |  | 13.12d → 9.12d |
| 46 | Acceptatietest ondertekend en uitgevoerd | 2017-03-08 10:50 → 2017-03-15 10:50 (+7d) | 2017-03-13 09:50 → 2017-03-20 09:50 (+7d) |  | 13.12d → 9.12d |
| 47 | Verslag van de resultaten | 2017-03-13 09:50 → 2017-03-20 09:50 (+7d) | 2017-03-13 11:50 → 2017-03-20 11:50 (+7d) |  | 13.12d → 9.12d |
| 48 | **WP 3.3** | 2017-03-13 11:50 → 2017-03-20 11:50 (+7d) | 2017-03-15 09:50 → 2017-03-22 09:50 (+7d) |  | 13.12d → 9.12d |
| 49 | Documentatie van het implermenteren | 2017-03-13 11:50 → 2017-03-20 11:50 (+7d) | 2017-03-15 09:50 → 2017-03-22 09:50 (+7d) |  | 13.12d → 9.12d |
| 50 | **WP 3.4** | 2017-03-15 09:50 → 2017-03-22 09:50 (+7d) | 2017-03-15 11:50 → 2017-03-22 11:50 (+7d) |  | 13.12d → 9.12d |
| 51 | Evaluatierapport | 2017-03-15 09:50 → 2017-03-22 09:50 (+7d) | 2017-03-15 11:50 → 2017-03-22 11:50 (+7d) |  | 13.12d → 9.12d |

## Version 3 (saved 2017-02-23, file 2017-02-22_Project-Planning_V1.mpp)

Note of the change: Modeldictionary af

Last finish stays 2017-04-07. Complete tasks 4 → 13.

Changed:

| ID | Task | Start | Finish | Complete | Total float |
| --- | --- | --- | --- | --- | --- |
| 1 | **Kerntaak 1** |  |  | 45% → 81% |  |
| 2 | **WP 1.1** |  | 2017-02-16 11:20 A | 85% → 100% | 0d → none |
| 4 | Hernieuwde opdracht |  | 2017-02-15 09:20 A | 50% → 100% | 1.5d → none |
| 6 | Prototype |  | 2017-02-16 11:20 A | 80% → 100% | 0d → none |
| 7 | **WP 1.2** |  |  | 55% → 70% | 0d → 13.38d |
| 8 | Plan van aanpak |  |  | 10% → 40% | 0d → 13.38d |
| 10 | **WP 1.3** |  | 2017-02-22 09:20 A | 75% → 100% | 0.15d → none |
| 11 | Use Case Diagram en Template |  | 2017-02-20 10:20 A | 75% → 100% | 0.56d → none |
| 12 | Activiteitendiagrammen |  | 2017-02-22 09:20 A | 75% → 100% | 0.15d → none |
| 13 | **WP 1.4** |  |  | 5% → 42% |  |
| 14 | Modeldictionary |  | 2017-02-22 12:20 A | 20% → 100% | 9.12d → none |
| 16 | Datadictionary | 2017-02-17 10:20 A | 2017-02-17 12:20 A | 0% → 100% | 12.38d → none |
| 18 | **WP 1.5** |  | 2017-02-23 09:20 A | 11% → 100% | 10.62d → none |
| 19 | Taakverdeling Ontwikkelomgeving | 2017-02-20 08:20 A | 2017-02-20 10:20 A | 0% → 100% | 12.38d → none |
| 21 | Back-up procedure | 2017-02-20 11:20 A | 2017-02-22 09:20 A | 0% → 100% | 10.62d → none |
| 22 | Verslag over de installatie, configuratie en testen. | 2017-02-22 09:20 A | 2017-02-23 09:20 A | 0% → 100% | 10.62d → none |

## Version 4 (saved 2017-02-23, file 2017-02-24_Project-Planning_V1.mpp)

Note of the change: Model dictionary, data dicitonary, Klassediagram, sequantiediagram gefixt en af! PLanning bijgwerwkt

Last finish stays 2017-04-07. Complete tasks 13 → 15.

Changed:

| ID | Task | Start | Finish | Complete | Total float |
| --- | --- | --- | --- | --- | --- |
| 1 | **Kerntaak 1** |  |  | 81% → 96% |  |
| 13 | **WP 1.4** |  | 2017-02-24 11:20 A | 42% → 100% | 9.12d → none |
| 15 | Klassendiagram | 2017-02-23 08:20 A | 2017-02-23 11:20 A | 0% → 100% | 9.12d → none |
| 17 | Sequentiediagrammen | 2017-02-23 11:20 A | 2017-02-24 11:20 A | 0% → 100% | 9.12d → none |

## Version 5 (saved 2017-02-24, file 2017-02-24_Project-Planning_V1.mpp)

Note of the change: ALLES GEMAAKT KT 1 AF, SANTINO WAAROM KAPOT MAKEN ALTIJD

Last finish stays 2017-04-07. Complete tasks 15 → 16.

Changed:

| ID | Task | Finish | Complete | Total float |
| --- | --- | --- | --- | --- |
| 1 | **Kerntaak 1** | 2017-02-24 11:20 A | 96% → 100% | 9.12d → none |
| 7 | **WP 1.2** | 2017-02-17 10:20 A | 70% → 100% | 13.38d → none |
| 8 | Plan van aanpak | 2017-02-17 10:20 A | 40% → 100% | 13.38d → none |

## Version 6 (saved 2017-03-06, file 2017-02-24_Project-Planning_V1.mpp)

Note of the change: PLANNING BIJGEWERKT

Last finish stays 2017-04-07.

Changed:

| ID | Task | Start | Finish | Duration | Total float | Predecessors | Other |
| --- | --- | --- | --- | --- | --- | --- | --- |
| 24 | **Kerntaak 2** |  | 2017-03-13 11:50 → 2017-03-10 12:20 (-3d) | 5.12d → 4.25d | 9.12d → 10d |  |  |
| 25 | **WP 2.1** |  | 2017-03-08 11:20 → 2017-03-08 09:20 | 2d → 1.5d | 9.12d → 10d |  |  |
| 29 | Procedure databasegegevens | 2017-03-08 09:20 → 2017-02-24 11:20 (-12d) | 2017-03-08 11:20 → 2017-03-06 09:20 (-2d) |  | 9.12d → 10.62d | 28 → none |  |
| 30 | **WP 2.2** | 2017-03-08 11:20 → 2017-03-08 09:20 | 2017-03-09 11:50 → 2017-03-08 12:20 (-1d) | 1.12d → 0.75d | 9.12d → 10d |  |  |
| 31 | Taakverdeling realisatie applicatie | 2017-03-08 11:20 → 2017-03-08 09:20 | 2017-03-08 12:20 → 2017-03-08 10:20 |  | 9.12d → 9.62d |  |  |
| 32 | Materialen- en middelenlijst voor het applicatie | 2017-03-09 08:20 → 2017-03-08 10:20 (-1d) | 2017-03-09 10:20 → 2017-03-08 12:20 (-1d) |  | 9.12d → 9.62d |  |  |
| 33 | Klassendiagram vanuit Visual Studio | 2017-03-09 10:20 → 2017-03-08 09:20 (-1d) | 2017-03-09 10:50 → 2017-03-08 09:50 (-1d) |  | 9.12d → 10.38d | 32 → 28 | resources Santino → Tarik |
| 34 | Werkende solution en gesperkverslag | 2017-03-09 10:50 → 2017-03-08 09:50 (-1d) | 2017-03-09 11:50 → 2017-03-08 10:50 (-1d) |  | 9.12d → 10.38d |  |  |
| 35 | **WP 2.3** | 2017-03-09 11:50 → 2017-03-09 08:20 | 2017-03-13 11:50 → 2017-03-10 12:20 (-3d) |  | 9.12d → 10d |  |  |
| 36 | Gedetailleerd testplan | 2017-03-09 11:50 → 2017-03-09 08:20 | 2017-03-10 09:50 → 2017-03-09 10:20 (-1d) |  | 9.12d → 10d |  |  |
| 37 | Lijst van test-tools | 2017-03-10 09:50 → 2017-03-09 10:20 (-1d) | 2017-03-10 10:50 → 2017-03-09 11:20 (-1d) |  | 9.12d → 10d |  |  |
| 38 | Uitgevoerde test en documentatie van de resultaten (van de test) | 2017-03-10 10:50 → 2017-03-09 11:20 (-1d) | 2017-03-13 08:50 → 2017-03-10 09:20 (-3d) |  | 9.12d → 10d |  |  |
| 39 | Aanpassingen aan de applicatie | 2017-03-13 08:50 → 2017-03-10 09:20 (-3d) | 2017-03-13 11:50 → 2017-03-10 12:20 (-3d) |  | 9.12d → 10d |  |  |
| 41 | **Kerntaak 3** | 2017-03-13 11:50 → 2017-03-13 08:20 | 2017-03-22 11:50 → 2017-03-20 12:20 (-2d) |  | 9.12d → 10d |  |  |
| 42 | **WP 3.1** | 2017-03-13 11:50 → 2017-03-13 08:20 | 2017-03-15 09:50 → 2017-03-13 10:20 (-2d) |  | 9.12d → 10d |  |  |
| 43 | Implementatieplan | 2017-03-13 11:50 → 2017-03-13 08:20 | 2017-03-15 09:50 → 2017-03-13 10:20 (-2d) |  | 9.12d → 10d |  |  |
| 44 | **WP 3.2** | 2017-03-15 09:50 → 2017-03-13 10:20 (-2d) | 2017-03-20 11:50 → 2017-03-17 12:20 (-3d) |  | 9.12d → 10d |  |  |
| 45 | Acceptatietest maken | 2017-03-15 09:50 → 2017-03-13 10:20 (-2d) | 2017-03-15 10:50 → 2017-03-13 11:20 (-2d) |  | 9.12d → 10d |  |  |
| 46 | Acceptatietest ondertekend en uitgevoerd | 2017-03-15 10:50 → 2017-03-13 11:20 (-2d) | 2017-03-20 09:50 → 2017-03-17 10:20 (-3d) |  | 9.12d → 10d |  |  |
| 47 | Verslag van de resultaten | 2017-03-20 09:50 → 2017-03-17 10:20 (-3d) | 2017-03-20 11:50 → 2017-03-17 12:20 (-3d) |  | 9.12d → 10d |  |  |
| 48 | **WP 3.3** | 2017-03-20 11:50 → 2017-03-20 08:20 | 2017-03-22 09:50 → 2017-03-20 10:20 (-2d) |  | 9.12d → 10d |  |  |
| 49 | Documentatie van het implermenteren | 2017-03-20 11:50 → 2017-03-20 08:20 | 2017-03-22 09:50 → 2017-03-20 10:20 (-2d) |  | 9.12d → 10d |  |  |
| 50 | **WP 3.4** | 2017-03-22 09:50 → 2017-03-20 10:20 (-2d) | 2017-03-22 11:50 → 2017-03-20 12:20 (-2d) |  | 9.12d → 10d |  |  |
| 51 | Evaluatierapport | 2017-03-22 09:50 → 2017-03-20 10:20 (-2d) | 2017-03-22 11:50 → 2017-03-20 12:20 (-2d) |  | 9.12d → 10d |  |  |

## Version 7 (saved 2017-03-13, file 2017-02-24_Project-Planning_V1.mpp)

Note of the change: Nieuws weggehaald

Last finish stays 2017-04-07.

Added:

| ID | Task | Duration | Start | Finish |
| --- | --- | --- | --- | --- |
| 53 | Project deadline | 4h? | 2017-04-07 08:20 | 2017-04-07 12:20 |

## Version 8 (saved 2017-03-14, file 2017-02-24_Project-Planning_V1.mpp)

Note of the change: Newyork cirryyyy

Last finish stays 2017-04-07. Complete tasks 16 → 22.

Changed:

| ID | Task | Start | Finish | Complete | Total float |
| --- | --- | --- | --- | --- | --- |
| 24 | **Kerntaak 2** | 2017-02-24 11:20 A |  | 0% → 57% | 11d → 10d |
| 25 | **WP 2.1** | 2017-02-24 11:20 A |  | 0% → 70% | 11d → 0d |
| 26 | Organisatieonderzoek over reeds gebruikte databases | 2017-02-24 11:20 A |  | 0% → 80% | 9.12d → 1d |
| 27 | Normalisatie Database en datadictionary bijwerken | 2017-03-06 09:20 A | 2017-03-06 11:20 A | 0% → 100% | 10d → none |
| 29 | Procedure databasegegevens | 2017-02-24 11:20 A | 2017-03-06 09:20 A | 0% → 100% | 10.62d → none |
| 30 | **WP 2.2** | 2017-03-08 09:20 A |  | 0% → 67% | 11d → 0d |
| 31 | Taakverdeling realisatie applicatie | 2017-03-08 09:20 A | 2017-03-08 10:20 A | 0% → 100% | 9.62d → none |
| 32 | Materialen- en middelenlijst voor het applicatie | 2017-03-08 10:20 A | 2017-03-08 12:20 A | 0% → 100% | 9.62d → none |
| 35 | **WP 2.3** | 2017-03-09 08:20 A |  | 0% → 38% | 11d → 10d |
| 36 | Gedetailleerd testplan | 2017-03-09 08:20 A | 2017-03-09 10:20 A | 0% → 100% | 10d → none |
| 37 | Lijst van test-tools | 2017-03-09 10:20 A | 2017-03-09 11:20 A | 0% → 100% | 10d → none |

## Version 9 (saved 2017-03-23, file 2017-02-24_Project-Planning_V1.1.mpp)

Note of the change: PLanning bijgewerkt.

Last finish stays 2017-04-07. Complete tasks 22 → 23.

Added:

| ID | Task | Duration | Start | Finish | Predecessors | Resources |
| --- | --- | --- | --- | --- | --- | --- |
| 33 | App bouwen in Visual Studio | 33h | 2017-03-09 08:20 | 2017-03-23 09:20 | 32 | Tarik; Santino |

Changed:

| ID | Task | Start | Finish | Duration | Complete | Total float | Predecessors |
| --- | --- | --- | --- | --- | --- | --- | --- |
| 24 | **Kerntaak 2** |  | 2017-03-10 12:20 → 2017-03-24 11:50 (+14d) | 4.25d → 12.12d | 57% → 25% | 10d → 3.12d |  |
| 25 | **WP 2.1** |  |  |  | 70% → 95% |  |  |
| 26 | Organisatieonderzoek over reeds gebruikte databases |  | 2017-03-06 09:20 A |  | 80% → 100% | 1d → none |  |
| 28 | Database bouwen | 2017-03-06 11:20 A |  |  | 0% → 80% | 0d → -7.88d |  |
| 30 | **WP 2.2** |  | 2017-03-08 12:20 → 2017-03-23 10:50 (+15d) | 0.75d → 9.38d | 67% → 8% | 0d → -8.62d |  |
| 34 | Klassendiagram vanuit Visual Studio | 2017-03-08 09:20 → 2017-03-23 09:20 (+15d) | 2017-03-08 09:50 → 2017-03-23 09:50 (+15d) |  |  | 10.38d → -8.62d | 28 → 33 |
| 35 | Werkende solution en gesperkverslag | 2017-03-08 09:50 → 2017-03-23 09:50 (+15d) | 2017-03-08 10:50 → 2017-03-23 10:50 (+15d) |  |  | 10.38d → -8.62d |  |
| 36 | **WP 2.3** |  | 2017-03-10 12:20 → 2017-03-24 11:50 (+14d) | 2d → 9.88d |  | 10d → 3.12d |  |
| 37 | Gedetailleerd testplan |  |  |  |  |  | none → 33 |
| 39 | Uitgevoerde test en documentatie van de resultaten (van de test) | 2017-03-09 11:20 → 2017-03-23 10:50 (+14d) | 2017-03-10 09:20 → 2017-03-24 08:50 (+14d) |  |  | 10d → 3.12d |  |
| 40 | Aanpassingen aan de applicatie | 2017-03-10 09:20 → 2017-03-24 08:50 (+14d) | 2017-03-10 12:20 → 2017-03-24 11:50 (+14d) |  |  | 10d → 3.12d |  |
| 42 | **Kerntaak 3** | 2017-03-13 08:20 → 2017-03-24 11:50 (+11d) | 2017-03-20 12:20 → 2017-04-03 11:50 (+14d) |  |  | 11d → 3.12d |  |
| 43 | **WP 3.1** | 2017-03-13 08:20 → 2017-03-24 11:50 (+11d) | 2017-03-13 10:20 → 2017-03-27 09:50 (+14d) |  |  | 11d → 3.12d |  |
| 44 | Implementatieplan | 2017-03-13 08:20 → 2017-03-24 11:50 (+11d) | 2017-03-13 10:20 → 2017-03-27 09:50 (+14d) |  |  | 10d → 3.12d |  |
| 45 | **WP 3.2** | 2017-03-13 10:20 → 2017-03-27 09:50 (+14d) | 2017-03-17 12:20 → 2017-03-31 11:50 (+14d) |  |  | 11d → 3.12d |  |
| 46 | Acceptatietest maken | 2017-03-13 10:20 → 2017-03-27 09:50 (+14d) | 2017-03-13 11:20 → 2017-03-27 10:50 (+14d) |  |  | 10d → 3.12d |  |
| 47 | Acceptatietest ondertekend en uitgevoerd | 2017-03-13 11:20 → 2017-03-27 10:50 (+14d) | 2017-03-17 10:20 → 2017-03-31 09:50 (+14d) |  |  | 10d → 3.12d |  |
| 48 | Verslag van de resultaten | 2017-03-17 10:20 → 2017-03-31 09:50 (+14d) | 2017-03-17 12:20 → 2017-03-31 11:50 (+14d) |  |  | 10d → 3.12d |  |
| 49 | **WP 3.3** | 2017-03-20 08:20 → 2017-03-31 11:50 (+11d) | 2017-03-20 10:20 → 2017-04-03 09:50 (+14d) |  |  | 11d → 3.12d |  |
| 50 | Documentatie van het implermenteren | 2017-03-20 08:20 → 2017-03-31 11:50 (+11d) | 2017-03-20 10:20 → 2017-04-03 09:50 (+14d) |  |  | 11d → 3.12d |  |
| 51 | **WP 3.4** | 2017-03-20 10:20 → 2017-04-03 09:50 (+14d) | 2017-03-20 12:20 → 2017-04-03 11:50 (+14d) |  |  | 11d → 3.12d |  |
| 52 | Evaluatierapport | 2017-03-20 10:20 → 2017-04-03 09:50 (+14d) | 2017-03-20 12:20 → 2017-04-03 11:50 (+14d) |  |  | 11d → 3.12d |  |
